# CTRP2-ProjectSchedule

Schedule from MS Project, 2011-08-03 to 2012-02-22.

## Calendars

- Standard: Mon-Fri 08:00-12:00, 13:00-17:00; Sat-Sun off.

## Resources

| Resource |
| --- |
| Bala |
| Smita |
| Nelli |
| Paula |
| Hugh |
| Steve Matyas |
| Todd |
| Steve L |
| Sohal |
| Harsha |
| Naveen |
| BDA Team |
| Systems Team |
| QA3 |
| QA4 |
| QA5 |
| Vrushali |
| Max |
| VCDE |
| Anu |
| rushali |
| CTEP |
| caXchange |
| C3PR |
| caAERS |
| PSC |
| LV |
| BDA |
| "C3PR |
| Documentation |
| caGrid |
| QA |
| BAM |
| Edmond |
| NCI |
| SAIC-F |
| Web Team |
| Bill Dyer |
| CCTS Team |
| John S |
| Patrick |
| Architects |
| Christo |
| John |
| Rhett |
| Nellie |
| Steve |
| Kalpesh |
| David L |
| Stevel L |
| Kumar C |
| Gia |
| Wendy |
| Raj |
| Steve M |
| Lauren |
| Systems |
| CTRO |
| Hannes |
| SMEs |
| Gisele |
| Joe |
| CTRP Dev team |
| CBIIT |
| All |
| Analysts |
| TBD |
| Charles |
| ESST |
| Developers |
| Lisa |
| Christophe |
| Krishna |
| QA1 |
| QA2 |
| David |
| Security |
| Arch |
| Tech Leads |
| Paula B |
| Kalpana |
| KK |
| Abe |
| Kim |
| Vijay |
| CAT |
| George |
| Larry |
| Michael O |
| Resource 1 |
| Resource 2 |
| Resource3 |
| Resource 4 |
| Resource 5 |
| Gisele S |
| Dianne R |
| HR |
| NA |
| SL |
| ScenPro |
| 5AM |
| TP |
| EM |
| KE |
| JM |
| DL |
| Paul |
| Michael |
| Eilis |
| Team |
| Dev team |
| Ram P |
| NIH 508 team |
| Bryan |
| Bill D |

## Schedule

| ID | WBS | Task | Type | Duration | Start | Finish | Predecessors | Total slack | Free slack | Constraint |
| --- | --- | --- | --- | --- | --- | --- | --- | --- | --- | --- |
| 1 | 1 | **CAARRAY 2.x** |  | 146d? | 2011-08-03 | 2012-02-22 |  | 0d |  | start no earlier than 2011-08-03 |
| 2 | 1.1 | **2.4.0.3 PATCH (Large Data Set Import)** |  | 16d | 2011-08-03 | 2011-08-24 |  | 11d |  |  |
| 3 | 1.1.1 | Dev Testing of caArray Importer |  | 1d | 2011-08-03 | 2011-08-03 |  | 11d | 0d |  |
| 4 | 1.1.2 | Regression Testing on QA |  | 5d | 2011-08-04 | 2011-08-10 | 3 | 403d | 0d |  |
| 5 | 1.1.3 | Regression Testing on STAGE |  | 5d | 2011-08-11 | 2011-08-17 | 4 | 408d |  |  |
| 6 | 1.1.4 | Curator Testing on STAGE |  | 5d | 2011-08-11 | 2011-08-17 | 4 | 408d |  |  |
| 7 | 1.1.5 | App Scan on STAGE |  | 5d | 2011-08-11 | 2011-08-17 | 4 | 403d |  |  |
| 8 | 1.1.6 | Deployment to PROD |  | 5d | 2011-08-18 | 2011-08-24 | 7 | 403d |  |  |
| 9 | 1.1.7 | RELEASE 2.4.0.3 Patch | milestone | 0d | 2011-08-24 | 2011-08-24 | 8 | 11d |  |  |
| 10 | 1.2 | **2.4.1** |  | 22d | 2011-08-10 | 2011-09-08 |  | 0d |  | start no earlier than 2011-08-10 |
| 11 | 1.2.1 | **2.4.1 RC6** |  | 10d | 2011-08-10 | 2011-08-23 |  | 0d |  |  |
| 12 | 1.2.1.1 | Bug fixes for ARRAY-2053 and ARRAY-2055 |  | 10d | 2011-08-10 | 2011-08-23 |  | 0d |  |  |
| 13 | 1.2.1.2 | Test bug fixes on QA |  | 10d | 2011-08-10 | 2011-08-23 |  | 0d |  |  |
| 14 | 1.2.2 | **2.4.1 Deployment** |  | 12d | 2011-08-24 | 2011-09-08 | 11 | 123d |  |  |
| 15 | 1.2.2.1 | Test bug fixes on STAGE |  | 2d | 2011-08-24 | 2011-08-25 |  | 123d | 0d |  |
| 16 | 1.2.2.2 | Regression testing on STAGE |  | 3d | 2011-08-26 | 2011-08-30 | 15 | 7d |  |  |
| 17 | 1.2.2.3 | API Partner Testing on STAGE |  | 5d | 2011-08-26 | 2011-09-01 | 15 | 5d |  |  |
| 18 | 1.2.2.4 | Upload Release Artifacts |  | 5d | 2011-08-26 | 2011-09-01 | 15 | 5d |  |  |
| 19 | 1.2.2.5 | App Scan on STAGE |  | 5d | 2011-08-26 | 2011-09-01 | 15 | 123d | 0d |  |
| 20 | 1.2.2.6 | Deploy to PRODUCTION |  | 5d | 2011-09-02 | 2011-09-08 | 19 | 123d | 0d |  |
| 21 | 1.3 | RELEASE 2.4.1 | milestone | 0d | 2011-09-08 | 2011-09-08 | 20 | 123d |  |  |
| 22 | 1.4 | **2.5.0 (LOEs unknown)** |  | 130d | 2011-08-24 | 2012-02-21 | 11 | 0d |  |  |
| 23 | 1.4.1 | Jboss 5.1 / Java 6 upgrade |  | 5d | 2011-08-24 | 2011-08-30 |  | 0d |  |  |
| 24 | 1.4.2 | File system storage of raw files |  | 15d | 2011-08-31 | 2011-09-20 | 23 | 0d |  |  |
| 25 | 1.4.3 | Plug-in architecture |  | 10d | 2011-09-21 | 2011-10-04 | 24 | 0d |  |  |
| 26 | 1.4.4 | Fix CI test suite |  | 5d | 2011-10-05 | 2011-10-11 | 25 | 0d |  |  |
| 27 | 1.4.5 | Upgrade to Anthill Pro 3 |  | 5d | 2011-10-12 | 2011-10-18 | 26 | 0d |  |  |
| 28 | 1.4.6 | Resumable uploads/downloads |  | 20d | 2011-10-19 | 2011-11-15 | 27 | 0d |  |  |
| 29 | 1.4.7 | Store parsed data on file system |  | 20d | 2011-11-16 | 2011-12-13 | 28 | 0d |  |  |
| 30 | 1.4.8 | Split imports into multiple transactions |  | 20d | 2011-12-14 | 2012-01-10 | 29 | 0d |  |  |
| 31 | 1.4.9 | Optimize parsers |  | 20d | 2012-01-11 | 2012-02-07 | 30 | 0d |  |  |
| 32 | 1.4.10 | Get Section 508 compliance to 90% |  | 10d | 2012-02-08 | 2012-02-21 | 31 | 0d |  |  |

| ID | WBS | Task | Duration | Start | Finish | Predecessors | Total slack |
| --- | --- | --- | --- | --- | --- | --- | --- |
| 33 | 1.5 | **PRODUCT BACKLOG** | 1d? | 2012-02-22 | 2012-02-22 | 22 | 0d |
| 34 | 1.5.1 | **Maintenance and Bug Fixes** | 1d? | 2012-02-22 | 2012-02-22 |  | 0d |
| 35 | 1.5.1.1 | Collaborator Group Defect | 1d? | 2012-02-22 | 2012-02-22 |  | 0d |
| 36 | 1.5.1.2 | Expand unparsed file types | 1d? | 2012-02-22 | 2012-02-22 |  | 0d |
| 37 | 1.5.1.3 | MAGE-TAB v1.1 support | 1d? | 2012-02-22 | 2012-02-22 |  | 0d |
| 38 | 1.5.1.4 | Clean up duplicate terms | 1d? | 2012-02-22 | 2012-02-22 |  | 0d |
| 39 | 1.5.1.5 | Import verification to prevent unintentional biomaterial/term creation | 1d? | 2012-02-22 | 2012-02-22 |  | 0d |
| 40 | 1.5.1.6 | Prevent multiple hybs to 1 file association | 1d? | 2012-02-22 | 2012-02-22 |  | 0d |
| 41 | 1.5.1.7 | IE 8 UI bugs | 1d? | 2012-02-22 | 2012-02-22 |  | 0d |
| 42 | 1.5.1.8 | Fix SDRF export of multiple derived data file columns | 1d? | 2012-02-22 | 2012-02-22 |  | 0d |
| 43 | 1.5.1.9 | Fix LSIDs for unparsed array designs | 1d? | 2012-02-22 | 2012-02-22 |  | 0d |
| 44 | 1.5.2 | **Grid Security** | 1d? | 2012-02-22 | 2012-02-22 |  | 0d |
| 45 | 1.5.2.1 | ARRAY-1463 | 1d? | 2012-02-22 | 2012-02-22 |  | 0d |
| 46 | 1.5.2.2 | ARRAY-1928 | 1d? | 2012-02-22 | 2012-02-22 |  | 0d |
| 47 | 1.5.2.3 | ARRAY-1353 | 1d? | 2012-02-22 | 2012-02-22 |  | 0d |
| 48 | 1.5.2.4 | ARRAY-1462 | 1d? | 2012-02-22 | 2012-02-22 |  | 0d |
| 49 | 1.5.2.5 | ARRAY-1929 | 1d? | 2012-02-22 | 2012-02-22 |  | 0d |
| 50 | 1.5.2.6 | ARRAY-1472 | 1d? | 2012-02-22 | 2012-02-22 |  | 0d |
| 51 | 1.5.3 | **Single Sign-on** | 1d? | 2012-02-22 | 2012-02-22 |  | 0d |
| 52 | 1.5.3.1 | ARRAY-1930 | 1d? | 2012-02-22 | 2012-02-22 |  | 0d |
| 53 | 1.5.4 | **Audit Trail** | 1d? | 2012-02-22 | 2012-02-22 |  | 0d |
| 54 | 1.5.4.1 | ARRAY-1931 | 1d? | 2012-02-22 | 2012-02-22 |  | 0d |
| 55 | 1.5.4.2 | ARRAY-1933 | 1d? | 2012-02-22 | 2012-02-22 |  | 0d |
| 56 | 1.5.4.3 | ARRAY-1932 | 1d? | 2012-02-22 | 2012-02-22 |  | 0d |

| ID | WBS | Task | Duration | Start | Finish | Total slack |
| --- | --- | --- | --- | --- | --- | --- |
| 57 | 1.5.5 | **File-level permissions for role-based security** | 1d? | 2012-02-22 | 2012-02-22 | 0d |
| 58 | 1.5.5.1 | ARRAY-1938 | 1d? | 2012-02-22 | 2012-02-22 | 0d |
